# Barber 920 - Propuesta para la siguiente fase (O a W)

Schedule from MS Project XML, 2026-10-05 to 2026-10-21, status date 2026-10-04, 2 hours a day, costs in $.
Equipo Barber 920 UACJ

## Calendars

- Equipo 18:30 a 20:30 lunes a viernes: Mon-Fri 18:30-20:30; Sat-Sun off.

## Resources

| Resource | Rate |
| --- | --- |
| Luis Uziel Cruz Martínez | 80 |
| Alison Aguirre Hernández | 80 |
| Carlos Guerrero Morales | 80 |
| Dante Uriel Ramírez Márquez | 80 |
| Jesús Alberto González Martínez | 80 |

## Schedule

| ID | WBS | Task | Duration | Start | Finish | Predecessors | Resources | Work | Cost |
| --- | --- | --- | --- | --- | --- | --- | --- | --- | --- |
| 1 | 2.2 | O Completar acuerdos y datos | 1d | 2026-10-05 | 2026-10-05 |  | Alison Aguirre Hernández | 2h | 1.6 |
| 2 | 2.3 | P Completar catálogo y sucursales | 2d | 2026-10-06 | 2026-10-07 | 1 | Alison Aguirre Hernández | 4h | 3.2 |
| 3 | 2.4 | Q Definir personal y reglas | 3d | 2026-10-06 | 2026-10-08 | 1 | Dante Uriel Ramírez Márquez | 6h | 4.8 |
| 4 | 5.3 | R Ajustar interfaz con datos confirmados | 2d | 2026-10-08 | 2026-10-09 | 2 | Carlos Guerrero Morales | 4h | 3.2 |
| 5 | 5.4 | S Adaptar API y disponibilidad | 4d | 2026-10-09 | 2026-10-14 | 3 | Jesús Alberto González Martínez | 8h | 6.4 |
| 6 | 6.1 | T Ejecutar pruebas integrales | 2d | 2026-10-15 | 2026-10-16 | 4, 5 | Jesús Alberto González Martínez | 4h | 3.2 |
| 7 | 6.2 | U Revisar versión con cliente y equipo | 1d | 2026-10-19 | 2026-10-19 | 6 | Carlos Guerrero Morales | 2h | 1.6 |
| 8 | 6.3 | V Corregir observaciones | 2d | 2026-10-20 | 2026-10-21 | 7 | Carlos Guerrero Morales | 4h | 3.2 |
| 9 | 7.2 | W Preparar evidencia de la iteración | 2d | 2026-10-19 | 2026-10-20 | 6 | Luis Uziel Cruz Martínez | 4h | 3.2 |

Notes:
- 1: Propuesta del 4 de octubre de 2026. WBS 2.2. TE de 1 jornada de 2 horas. Responsable: Alison Aguirre Hernández. Costo calculado con la tarifa académica de $80 MXN por hora; no es un gasto real. Continúa el plan A a N, que terminó con la entrevista del 3 de octubre. Las fechas pueden moverse según los datos que entregue el cliente.
- 2: Propuesta del 4 de octubre de 2026. WBS 2.3. TE de 2 jornadas de 2 horas. Responsable: Alison Aguirre Hernández. Costo calculado con la tarifa académica de $80 MXN por hora; no es un gasto real. Continúa el plan A a N, que terminó con la entrevista del 3 de octubre. Las fechas pueden moverse según los datos que entregue el cliente.
- 3: Propuesta del 4 de octubre de 2026. WBS 2.4. TE de 3 jornadas de 2 horas. Responsable: Dante Uriel Ramírez Márquez. Costo calculado con la tarifa académica de $80 MXN por hora; no es un gasto real. Continúa el plan A a N, que terminó con la entrevista del 3 de octubre. Las fechas pueden moverse según los datos que entregue el cliente.
- 4: Propuesta del 4 de octubre de 2026. WBS 5.3. TE de 2 jornadas de 2 horas. Responsable: Carlos Guerrero Morales. Costo calculado con la tarifa académica de $80 MXN por hora; no es un gasto real. Continúa el plan A a N, que terminó con la entrevista del 3 de octubre. Las fechas pueden moverse según los datos que entregue el cliente.
- 5: Propuesta del 4 de octubre de 2026. WBS 5.4. TE de 4 jornadas de 2 horas. Responsable: Jesús Alberto González Martínez. Costo calculado con la tarifa académica de $80 MXN por hora; no es un gasto real. Continúa el plan A a N, que terminó con la entrevista del 3 de octubre. Las fechas pueden moverse según los datos que entregue el cliente.
- 6: Propuesta del 4 de octubre de 2026. WBS 6.1. TE de 2 jornadas de 2 horas. Responsable: Jesús Alberto González Martínez. Costo calculado con la tarifa académica de $80 MXN por hora; no es un gasto real. Continúa el plan A a N, que terminó con la entrevista del 3 de octubre. Las fechas pueden moverse según los datos que entregue el cliente.
- 7: Propuesta del 4 de octubre de 2026. WBS 6.2. TE de 1 jornada de 2 horas. Responsable: Carlos Guerrero Morales. Costo calculado con la tarifa académica de $80 MXN por hora; no es un gasto real. Continúa el plan A a N, que terminó con la entrevista del 3 de octubre. Las fechas pueden moverse según los datos que entregue el cliente.
- 8: Propuesta del 4 de octubre de 2026. WBS 6.3. TE de 2 jornadas de 2 horas. Responsable: Carlos Guerrero Morales. Costo calculado con la tarifa académica de $80 MXN por hora; no es un gasto real. Continúa el plan A a N, que terminó con la entrevista del 3 de octubre. Las fechas pueden moverse según los datos que entregue el cliente.
- 9: Propuesta del 4 de octubre de 2026. WBS 7.2. TE de 2 jornadas de 2 horas. Responsable: Luis Uziel Cruz Martínez. Costo calculado con la tarifa académica de $80 MXN por hora; no es un gasto real. Continúa el plan A a N, que terminó con la entrevista del 3 de octubre. Las fechas pueden moverse según los datos que entregue el cliente.
